# 需求工程计划

Schedule from MS Project, 2018-09-19 to 2019-01-16, 3 hours a day, A marks actual dates.

## Calendars

- PRD2018-G01-工作日历: Mon-Sun 18:00-19:00. Exceptions (off unless hours are given): 2018-09-24 (中秋), 2018-10-05 to 2018-10-07 (国庆假期), 2018-11-23 17:00-17:25, 18:00-19:00 (第二次与杨老师访谈), 2018-11-29 13:30-14:30, 18:00-19:00 (需求工程项目计划评审), 2019-01-12 08:30-11:30, 13:30-14:30 (SRS评审).

## Resources

| Resource |
| --- |
| 陈铉文 |
| 刘值成 |
| 张威杰 |
| 章奇妙 |
| 于坤 |

## Schedule

| ID | WBS | Task | Type | Duration | Start | Finish | Predecessors | Complete | Remaining | Total slack | Resources | Work | Actual work | 输入 | 输出 |
| --- | --- | --- | --- | --- | --- | --- | --- | --- | --- | --- | --- | --- | --- | --- | --- |
| 1 | 1 | **基于项目的案例学习系统** |  | 82.14d? | 2018-09-19 08:00 A | 2019-01-16 21:00 |  | 99% | 0.73d? | 0d |  | 648.08h | 632.08h |  |  |
| 2 | 1.1 | **项目启动** |  | 32.47d | 2018-09-19 08:00 A | 2018-11-24 11:30 A |  | 100% |  |  |  | 31h | 31h |  |  |
| 3 | 1.1.1 | 项目提出 | milestone, manual | 0h | 2018-09-19 08:00 A | 2018-09-19 08:00 A |  | 100% |  |  | 陈铉文; 刘值成; 于坤; 张威杰; 章奇妙 |  |  | 杨老师发布的三个项目 | 可选择的三个项目 |
| 4 | 1.1.2 | 小组成立 | milestone, manual | 0h | 2018-09-19 09:00 A | 2018-09-19 09:00 A | 3 | 100% |  |  | 陈铉文; 刘值成; 于坤; 张威杰; 章奇妙 |  |  | 陈铉文、章奇妙、张威杰、于坤、刘值成 | G01小组，小组组长确定为陈铉文 |
| 5 | 1.1.3 | **项目所需软件安装** |  | 1.67d | 2018-09-20 18:00 A | 2018-09-22 11:30 A |  | 100% |  |  |  | 8h | 8h | 第一次会议讨论的小组分工 | 本项目需要的软件配置 |
| 6 | 1.1.3.1 | 界面原型工具安装 | manual | 0.67d | 2018-09-20 18:00 A | 2018-09-21 19:00 A | 182 | 100% |  |  | 章奇妙 | 2h | 2h | 需要准备的软件 | PS,Axure RP,墨刀 |
| 7 | 1.1.3.2 | office软件安装 | manual | 0.67d | 2018-09-20 18:00 A | 2018-09-21 19:00 A | 182 | 100% |  |  | 于坤 | 2h | 2h | 需要准备的软件 | office2016 |
| 8 | 1.1.3.3 | 需求管理软件安装 | manual | 0.67d | 2018-09-20 18:00 A | 2018-09-21 19:00 A | 182 | 100% |  |  | 刘值成 | 2h | 2h | 需要准备的软件 | sourcetree,githubdesktop |
| 9 | 1.1.3.4 | 软件整合分享 | manual | 0.67d | 2018-09-22 09:30 A | 2018-09-22 11:30 A | 6, 7, 8 | 100% |  |  | 章奇妙 | 2h | 2h | 项目所需要的所有软件 | 安装到所有成员电脑上 |
| 10 | 1.1.4 | **项目程序运行环境配置** |  | 0.33d | 2018-09-20 18:00 A | 2018-09-20 19:00 A |  | 100% |  |  |  | 1h | 1h | 基于项目的案例学习系统程序，硕士论文 | 能够正常运行项目程序的环境 |
| 11 | 1.1.4.1 | 拷贝源代码 | manual | 0.33d | 2018-09-20 18:00 A | 2018-09-20 19:00 A | 182 | 100% |  |  | 陈铉文 | 1h | 1h |  |  |
| 12 | 1.1.5 | 项目程序调试运行 | manual | 0.67d | 2018-09-25 18:00 A | 2018-09-26 19:00 A | 185, 11 | 100% |  |  | 张威杰 | 2h | 2h | 项目程序源代码、配置好的运行环境 | 能够完整运行的程序 |
| 13 | 1.1.6 | 《项目章程》 | milestone, manual | 1d | 2018-10-18 18:00 A | 2018-10-20 19:00 A | 192, 15 | 100% |  |  | 刘值成 | 3h | 3h | 确定要执行的项目 | 《项目章程》 |
| 14 | 1.1.7 | **可行性分析** |  | 25.47d | 2018-10-03 18:00 A | 2018-11-24 11:30 A |  | 100% |  |  |  | 17h | 17h |  |  |
| 15 | 1.1.7.1 | **《可行性分析》初稿** |  | 1d | 2018-10-03 18:00 A | 2018-10-08 19:00 A |  | 100% |  |  |  | 9h | 9h |  |  |
| 16 | 1.1.7.1.1 | 系统分析报告 | manual | 0.67d | 2018-10-03 18:00 A | 2018-10-04 19:00 A | 189 | 100% |  |  | 张威杰 | 2h | 2h | 硕士论文、可执行的系统 | 系统分析报告 |
| 17 | 1.1.7.1.2 | 技术可行性分析报告 | manual | 0.33d | 2018-10-03 18:00 A | 2018-10-03 19:00 A | 189 | 100% |  |  | 陈铉文 | 1h | 1h | 硕士论文、可执行的系统 | 技术可行性分析报告 |
| 18 | 1.1.7.1.3 | 操作可行性分析报告 | manual | 0.33d | 2018-10-04 18:00 A | 2018-10-04 19:00 A | 189 | 100% |  |  | 陈铉文 | 1h | 1h | 硕士论文、可执行的系统 | 操作可行性分析报告 |
| 19 | 1.1.7.1.4 | 经济可行性分析报告 | manual | 0.67d | 2018-10-03 18:00 A | 2018-10-04 19:00 A | 189 | 100% |  |  | 章奇妙 | 2h | 2h | 硕士论文、小组活动支出 | 经济可行性分析报告 |
| 20 | 1.1.7.1.5 | 社会可行性分析报告 | manual | 0.67d | 2018-10-03 18:00 A | 2018-10-04 19:00 A | 189 | 100% |  |  | 章奇妙 | 2h | 2h | 硕士论文、法律关于软件的条目 | 社会可行性分析报告 |
| 21 | 1.1.7.1.6 | 可行性分析初稿整理发布 | manual | 0.33d | 2018-10-08 18:00 A | 2018-10-08 19:00 A | 16, 17, 18, 19, 20 | 100% |  |  | 于坤 | 1h | 1h | 系统分析报告、技术可行性分析报告、操作可行性报告、经济可行性报告、社会可行性报告 | 《可行性分析》 |
| 22 | 1.1.7.2 | **《可行性分析》第一次修改** |  | 1.81d | 2018-11-22 18:00 A | 2018-11-24 11:30 A |  | 100% |  |  |  | 8h | 8h |  |  |
| 23 | 1.1.7.2.1 | 可选系统的方案 | manual | 1d | 2018-11-23 18:00 A | 2018-11-24 10:30 A | 201 | 100% |  |  | 张威杰 | 3h | 3h | 可执行的程序，《可行性分析》 | 可选系统的方案 |
| 24 | 1.1.7.2.2 | 现有系统分析 | manual | 0.67d | 2018-11-24 08:30 A | 2018-11-24 10:30 A | 201 | 100% |  |  | 于坤 | 2h | 2h | 市面上相类似的学习网站 | 现有系统分析 |
| 25 | 1.1.7.2.3 | 所建议的系统 | manual | 0.67d | 2018-11-22 18:00 A | 2018-11-23 19:00 A | 201 | 100% |  |  | 张威杰 | 2h | 2h | 硕士论文，基于项目的案例学习系统 | 所建议的系统 |
| 26 | 1.1.7.2.4 | 可行性分析文档第一次修改发布 | manual | 0.33d | 2018-11-24 10:30 A | 2018-11-24 11:30 A | 23, 24, 25, 21 | 100% |  |  | 陈铉文 | 1h | 1h | 可选系统方案，现有系统分析，所建议的系统，可行性分析初稿 | 可行性分析第一次修改 |

| ID | WBS | Task | Type | Duration | Start | Finish | Predecessors | Complete | Resources | Work | Actual work | 输入 | 输出 |
| --- | --- | --- | --- | --- | --- | --- | --- | --- | --- | --- | --- | --- | --- |
| 27 | 1.2 | **项目计划** |  | 33.47d | 2018-09-23 08:30 A | 2018-11-30 19:00 A |  | 100% |  | 43h | 43h |  |  |
| 28 | 1.2.1 | OBS | manual | 0.33d | 2018-09-23 08:30 A | 2018-09-23 09:30 A | 185, 9 | 100% | 陈铉文 | 1h | 1h | 小组成员分工 | OBS图 |
| 29 | 1.2.2 | OBS图修改 | manual | 0.67d | 2018-09-25 18:00 A | 2018-09-26 19:00 A | 28 | 100% | 陈铉文 | 2h | 2h | OBS | OBS图 |
| 30 | 1.2.3 | OBS图修改 | manual | 0.33d | 2018-11-22 18:00 A | 2018-11-22 19:00 A | 201, 29 | 100% | 陈铉文 | 1h | 1h | OBS | 修改的OBS图 |
| 31 | 1.2.4 | WBS | manual | 0.67d | 2018-09-23 09:30 A | 2018-09-23 11:30 A | 185 | 100% | 陈铉文 | 2h | 2h | 课本、项目任务分工 | WBS |
| 32 | 1.2.5 | 干系人分析 | manual | 0.33d | 2018-09-25 18:00 A | 2018-09-25 19:00 A | 185 | 100% | 于坤 | 1h | 1h |  |  |
| 33 | 1.2.6 | **需求工程项目计划** |  | 31.47d | 2018-09-28 18:00 A | 2018-11-30 19:00 A |  | 100% |  | 29h | 29h |  |  |
| 34 | 1.2.6.1 | **《需求工程项目计划》初稿** |  | 2.33d | 2018-09-28 18:00 A | 2018-09-30 11:30 A |  | 100% |  | 15.5h | 15.5h |  |  |
| 35 | 1.2.6.1.1 | 时间管理子计划 | manual | 0.33d | 2018-09-28 18:00 A | 2018-09-28 19:00 A | 186 | 100% | 陈铉文 | 1h | 1h | 课本、第三次小组任务分配 | 时间管理计划 |
| 36 | 1.2.6.1.2 | 范围管理子计划 | manual | 0.33d | 2018-09-28 18:00 A | 2018-09-28 19:00 A | 186 | 100% | 章奇妙 | 1h | 1h | 课本、第三次小组任务分配 | 范围管理计划 |
| 37 | 1.2.6.1.3 | 成本管理子计划 | manual | 3h | 2018-09-29 08:30 A | 2018-09-29 11:30 A | 186 | 100% | 章奇妙 | 3h | 3h | 课本、第三次小组任务分配 | 成本管理计划 |
| 38 | 1.2.6.1.4 | 质量管理子计划 | manual | 0.67d | 2018-09-28 18:00 A | 2018-09-29 09:30 A | 186 | 100% | 张威杰 | 2h | 2h | 课本、第三次小组任务分配 | 质量管理计划 |
| 39 | 1.2.6.1.5 | 沟通管理子计划 | manual | 0.33d | 2018-09-29 09:30 A | 2018-09-29 10:30 A | 186 | 100% | 张威杰 | 1h | 1h | 课本、第三次小组任务分配 | 沟通管理计划 |
| 40 | 1.2.6.1.6 | 风险管理子计划 | manual | 0.33d | 2018-09-28 18:00 A | 2018-09-28 19:00 A | 186 | 100% | 于坤 | 1h | 1h | 课本、第三次小组任务分配 | 风险管理计划 |
| 41 | 1.2.6.1.7 | 配置系统管理计划 | manual | 2.5h | 2018-09-28 18:00 A | 2018-09-29 10:00 A | 186 | 100% | 刘值成 | 2.5h | 2.5h | 课本、第三次小组任务分配 | 配置管理计划 |
| 42 | 1.2.6.1.8 | LOGO设计 | manual | 0.33d | 2018-09-29 18:00 A | 2018-09-29 19:00 A | 186 | 100% | 刘值成 | 1h | 1h | 第三次小组会议任务分配 | LOGO |
| 43 | 1.2.6.1.9 | 文档合并完善 | manual | 3h | 2018-09-30 08:30 A | 2018-09-30 11:30 A | 35, 36, 37, 38, 39, 40, 41, 31, 32 | 100% | 于坤 | 3h | 3h | 时间管理计划、范围管理计划、成本管理计划、质量管理计划、沟通管理计划、风险管理计划、配置系统管理计划 | 需求工程项目计划 |
| 44 | 1.2.6.2 | **《需求工程项目计划》第一次修改** |  | 2d | 2018-10-13 18:00 A | 2018-10-17 19:00 A |  | 100% |  | 5h | 5h |  |  |
| 45 | 1.2.6.2.1 | 按照新的文档标准修改 | manual | 0.67d | 2018-10-13 18:00 A | 2018-10-14 19:00 A | 56, 34 | 100% | 于坤 | 2h | 2h | ISO9001模板、需求工程项目计划 | 修改的需求工程项目计划 |
| 46 | 1.2.6.2.2 | 需求工程项目计划PPT制作 | manual | 1d | 2018-10-15 18:00 A | 2018-10-17 19:00 A | 45 | 100% | 刘值成 | 3h | 3h | 需求工程项目计划文档 | 需求工程项目计划PPT |
| 47 | 1.2.6.3 | **《需求工程项目计划》第二次修改** |  | 0.67d | 2018-11-01 18:00 A | 2018-11-02 19:00 A |  | 100% |  | 6h | 6h |  |  |
| 48 | 1.2.6.3.1 | 成本管理计划修改 | manual | 0.67d | 2018-11-01 18:00 A | 2018-11-02 19:00 A | 196, 37 | 100% | 章奇妙 | 2h | 2h | 成本管理计划 | 修改的成本管理计划 |
| 49 | 1.2.6.3.2 | 沟通管理计划修改 | manual | 0.67d | 2018-11-01 18:00 A | 2018-11-02 19:00 A | 196, 39 | 100% | 于坤 | 2h | 2h | 沟通管理计划 | 修改的沟通管理计划 |
| 50 | 1.2.6.3.3 | 风险管理计划修改 | manual | 0.67d | 2018-11-01 18:00 A | 2018-11-02 19:00 A | 196, 40 | 100% | 陈铉文 | 2h | 2h | 风险管理计划 | 修改的风险管理计划 |

| ID | WBS | Task | Type | Duration | Start | Finish | Predecessors | Complete | Remaining | Total slack | Constraint | Resources | Work | Actual work | 输入 | 输出 |
| --- | --- | --- | --- | --- | --- | --- | --- | --- | --- | --- | --- | --- | --- | --- | --- | --- |
| 51 | 1.2.6.4 | **《需求工程项目计划》第三次修改** |  | 0.17d | 2018-11-22 18:00 A | 2018-11-22 18:30 A |  | 100% |  |  |  |  | 0.5h | 0.5h |  |  |
| 52 | 1.2.6.4.1 | 范围管理计划修改 | manual | 0.17d | 2018-11-22 18:00 A | 2018-11-22 18:30 A | 201, 36 | 100% |  |  |  | 于坤 | 0.5h | 0.5h | 范围管理计划 | 修改的范围管理计划 |
| 53 | 1.2.6.5 | 《需求工程项目计划》第四次修改 | manual | 1h | 2018-11-29 18:00 A | 2018-11-29 19:00 A | 205 | 100% |  |  | finish no earlier than 2018-11-30 09:30 | 章奇妙 | 1h | 1h |  |  |
| 54 | 1.2.6.6 | 正式发布需求工程计划 | milestone, manual | 0.33d | 2018-11-30 18:00 A | 2018-11-30 19:00 A | 53 | 100% |  |  |  | 陈铉文 | 1h | 1h |  |  |
| 55 | 1.2.7 | 版本命名规范 | manual | 0.67d | 2018-10-03 18:00 A | 2018-10-04 19:00 A | 187 | 100% |  |  |  | 刘值成 | 2h | 2h | 小组第四次会议讨论 | 版本命名规范 |
| 56 | 1.2.8 | 文档标准变更 | manual | 0.67d | 2018-10-11 18:00 A | 2018-10-12 19:00 A | 190 | 100% |  |  |  | 章奇妙 | 2h | 2h | ISO9001模板 | 确定ISO9001为项目文档新模板 |
| 57 | 1.2.9 | git目录变更 | manual | 1d | 2018-10-28 18:00 A | 2018-10-30 19:00 A | 195 | 100% |  |  |  | 刘值成 | 3h | 3h | github目录结构 | 修改的github目录结构 |
| 58 | 1.3 | **项目执行** |  | 66.81d? | 2018-10-22 18:00 A | 2019-01-15 21:00 |  | 99% | 0.22d? | 0d |  |  | 329.5h | 328.5h |  |  |
| 59 | 1.3.1 | **需求开发** |  | 66.81d? | 2018-10-22 18:00 A | 2019-01-15 21:00 |  | 99% | 0.25d? | 0d |  |  | 266.5h | 265.5h |  |  |
| 60 | 1.3.1.1 | **需求获取** |  | 21.14d | 2018-10-22 18:00 A | 2018-12-01 10:30 |  | 97% | 0.69d | 0d |  |  | 30.5h | 29.5h |  |  |
| 61 | 1.3.1.1.1 | 定义产品愿景 | manual | 0.33d | 2018-10-22 18:00 A | 2018-10-22 19:00 A | 193 | 100% |  |  |  | 于坤 | 1h | 1h | 需求工程项目计划文档 | 愿景文档 |
| 62 | 1.3.1.1.2 | 定义项目范围 | manual | 0.33d | 2018-10-22 18:00 A | 2018-10-22 19:00 A | 193 | 100% |  |  |  | 章奇妙 | 1h | 1h | 需求工程项目计划文档 | 项目范围 |
| 63 | 1.3.1.1.3 | 确定需求开发过程 | manual | 0.33d | 2018-10-23 18:00 A | 2018-10-23 19:00 A | 62 | 100% |  |  |  | 陈铉文 | 1h | 1h | 产品愿景和项目范围 | 需求开发过程 |
| 64 | 1.3.1.1.4 | 用例图 | manual | 1d | 2018-10-25 18:00 A | 2018-10-27 19:00 A | 194 | 100% |  |  |  | 张威杰 | 3h | 3h | 项目程序，硕士论文 | 用例图 |
| 65 | 1.3.1.1.5 | 确定业务需求 | manual | 0.33d | 2018-10-25 18:00 A | 2018-10-25 19:00 A | 194, 224 | 100% |  |  |  | 陈铉文 | 1h | 1h | 访谈记录 | 业务需求 |
| 66 | 1.3.1.1.6 | 确定用户需求 | manual | 0.67d | 2018-10-26 18:00 A | 2018-10-27 19:00 A | 194, 224 | 100% |  |  |  | 陈铉文 | 2h | 2h | 访谈记录 | 用户需求 |
| 67 | 1.3.1.1.7 | 愿景与范围文档 | manual | 1d | 2018-10-28 08:30 A | 2018-10-28 11:30 A | 61, 65, 66, 43 | 100% |  |  |  | 于坤 | 3h | 3h | 产品愿景和项目范围 | 愿景与范围文档 |
| 68 | 1.3.1.1.8 | **愿景与范围文档补充** |  | 0.81d | 2018-11-22 18:00 A | 2018-11-23 19:00 A |  | 100% |  |  |  |  | 2.5h | 2.5h |  |  |
| 69 | 1.3.1.1.8.1 | 上下文图 | manual | 0.33d | 2018-11-22 18:00 A | 2018-11-22 19:00 A | 201 | 100% |  |  |  | 章奇妙 | 1h | 1h | 课本、程序 | 上下文图 |
| 70 | 1.3.1.1.8.2 | 关联图 | manual | 0.17d | 2018-11-22 18:30 A | 2018-11-22 19:00 A | 201 | 100% |  |  |  | 于坤 | 0.5h | 0.5h | 课本、程序 | 关联图 |
| 71 | 1.3.1.1.8.3 | 愿景与范围文档修改 | manual | 0.33d | 2018-11-23 18:00 A | 2018-11-23 19:00 A | 67, 69, 70 | 100% |  |  |  | 陈铉文 | 1h | 1h |  |  |
| 72 | 1.3.1.1.9 | QA计划 | manual | 0.33d | 2018-10-28 18:00 A | 2018-10-28 19:00 A | 195 | 100% |  |  |  | 陈铉文 | 1h | 1h | 课本 | QA计划 |
| 73 | 1.3.1.1.10 | **识别用户类型及其特征** |  | 1.33d | 2018-11-23 18:00 A | 2018-11-24 19:00 A |  | 100% |  |  |  |  | 2h | 2h |  |  |
| 74 | 1.3.1.1.10.1 | 识别用户类别 | manual | 0.33d | 2018-11-23 18:00 A | 2018-11-23 19:00 A | 196, 67 | 100% |  |  |  | 张威杰 | 1h | 1h | 对产品用户的判断 | 用户类别 |
| 75 | 1.3.1.1.10.2 | 制作用户画像 | manual | 0.33d | 2018-11-24 18:00 A | 2018-11-24 19:00 A | 196, 74 | 100% |  |  |  | 章奇妙 | 1h | 1h | 用户类别 | 用户画像 |
| 76 | 1.3.1.1.11 | 为每类用户选出用户代表 | manual | 0.67d | 2018-11-23 18:35 A | 2018-11-24 10:05 A | 71 | 100% |  |  |  | 刘值成 | 2h | 2h | 用户访谈报告 | 用户代表 |
| 77 | 1.3.1.1.12 | 分析用户工作流程 | manual | 0.33d | 2018-11-25 18:00 | 2018-11-25 19:00 | 76 |  |  |  |  | 于坤 | 1h |  | 用户代表使用过程 | 业务流程图 |

| ID | WBS | Task | Type | Duration | Start | Finish | Predecessors | Complete | Actual start | Actual finish | Resources | Work | Actual work | 输入 | 输出 |
| --- | --- | --- | --- | --- | --- | --- | --- | --- | --- | --- | --- | --- | --- | --- | --- |
| 78 | 1.3.1.1.13 | **调查问卷** |  | 0.67d | 2018-11-26 18:00 A | 2018-11-27 19:00 A |  | 100% |  |  |  | 2h | 2h |  |  |
| 79 | 1.3.1.1.13.1 | 问卷调查编写 | manual | 0.33d | 2018-11-26 18:00 A | 2018-11-26 19:00 A |  | 100% |  |  | 张威杰 | 1h | 1h | 用户访谈记录 | 调查问卷 |
| 80 | 1.3.1.1.13.2 | 分发问卷调查 | manual | 0.33d | 2018-11-27 18:00 A | 2018-11-27 19:00 A | 79 | 100% |  |  | 于坤 | 1h | 1h | 调查问卷 | 调查结果 |
| 81 | 1.3.1.1.14 | 分析文档 | manual | 1d | 2018-11-30 18:00 A | 2018-12-01 10:30 A | 12 | 100% |  |  | 章奇妙 | 3h | 3h | 现有文档、硕士论文 | 文档分析结果 |
| 82 | 1.3.1.1.15 | 检查问题报告 | manual | 0.33d | 2018-11-27 18:00 A | 2018-11-27 19:00 A |  | 100% |  |  | 刘值成 | 1h | 1h | 问题报告 | 提取的需求 |
| 83 | 1.3.1.1.16 | 《版本命名规范》修改 | manual | 0.67d | 2018-11-08 18:00 A | 2018-11-09 19:00 A | 198 | 100% |  |  | 陈铉文 | 2h | 2h | 版本命名规范 | 修改的版本命名规范 |
| 84 | 1.3.1.1.17 | 文档提交流程及github结构变更 | manual | 0.67d | 2018-11-13 18:00 A | 2018-11-14 19:00 A | 199 | 100% |  |  | 刘值成 | 2h | 2h | 小组讨论的文档提交流程 | 新的文档提交流程和github结构 |
| 85 | 1.3.1.2 | **需求分析** |  | 52.14d? | 2018-11-13 18:00 A | 2019-01-12 11:30 A |  | 100% |  |  |  | 58h | 58h |  |  |
| 86 | 1.3.1.2.1 | **界面原型绘制** |  | 1d? | 2018-11-30 18:00 | 2018-12-01 10:30 |  | 100% | 2018-11-13 18:00 | 2019-01-12 11:30 |  | 54h | 54h |  |  |
| 87 | 1.3.1.2.1.1 | 界面原型第一版 | manual | 1d | 2018-11-13 18:00 A | 2018-11-15 19:00 A | 67 | 100% |  |  | 刘值成 | 3h | 3h | 业务需求，功能需求 | 首页UI初稿 |
| 88 | 1.3.1.2.1.2 | 界面原型第二版（风格确定） | manual | 1.33d | 2018-11-16 18:00 A | 2018-11-17 11:30 A | 87 | 100% |  |  | 刘值成 | 4h | 4h | 业务需求，功能需求 | 界面风格 |
| 89 | 1.3.1.2.1.3 | 界面原型第三版 | manual | 0.67d | 2018-11-21 18:00 A | 2018-11-22 19:00 A | 88 | 100% |  |  | 章奇妙; 张威杰 | 4h | 4h | 业务需求，功能需求 | 管理员界面 |
| 90 | 1.3.1.2.1.4 | 界面原型第四版 | manual | 1.33d | 2018-11-23 18:00 A | 2018-11-24 11:30 A | 89 | 100% |  |  | 刘值成 | 4h | 4h | 业务需求，功能需求 | 用户界面 |
| 91 | 1.3.1.2.1.5 | 界面原型第五版 | manual | 1.33d | 2018-12-07 18:00 A | 2018-12-08 11:30 A | 90, 226 | 100% |  |  | 刘值成 | 4h | 4h | 访谈记录,业务需求，功能需求 | 案例管理员界面 |
| 92 | 1.3.1.2.1.6 | 界面原型第六版 | manual | 1.33d | 2018-12-09 08:30 A | 2018-12-10 19:00 A | 91 | 100% |  |  | 刘值成 | 4h | 4h | 业务需求，功能需求 | 首页轮播图修改 |
| 93 | 1.3.1.2.1.7 | 界面原型第七版 | manual | 1d | 2018-12-11 18:00 A | 2018-12-13 19:00 A | 92 | 100% |  |  | 刘值成 | 3h | 3h | 业务需求，功能需求 | 首页布局顺序，个人中心 |
| 94 | 1.3.1.2.1.8 | 界面原型第七版 | manual | 1.33d | 2018-12-14 18:00 A | 2018-12-15 11:30 A | 93 | 100% |  |  | 刘值成 | 4h | 4h | 业务需求，功能需求 | 社区界面 |
| 95 | 1.3.1.2.1.9 | 界面原型第八版 | manual | 1d | 2018-12-17 18:00 A | 2018-12-19 19:00 A | 94, 227 | 100% |  |  | 刘值成 | 3h | 3h | 访谈记录,业务需求，功能需求 | 案例创建页面 |
| 96 | 1.3.1.2.1.10 | 界面原型第九版 | manual | 1.67d | 2018-12-20 18:00 A | 2018-12-22 11:30 A | 95 | 100% |  |  | 刘值成 | 5h | 5h | 业务需求，功能需求 | 用户帖子管理界面 |
| 97 | 1.3.1.2.1.11 | 界面原型第十版 | manual | 1.67d | 2018-12-23 08:30 A | 2018-12-25 19:00 A | 96 | 100% |  |  | 章奇妙 | 5h | 5h | 业务需求，功能需求 | 网页跳转 |
| 98 | 1.3.1.2.1.12 | 界面原型第十一版 | manual | 1d | 2018-12-29 08:30 A | 2018-12-29 11:30 A | 97, 228, 229 | 100% |  |  | 张威杰 | 3h | 3h | 访谈记录,业务需求，功能需求 | 管理员界面修改 |
| 99 | 1.3.1.2.1.13 | 界面原型第十二版 | manual | 1d | 2019-01-02 18:00 A | 2019-01-04 19:00 A | 98 | 100% |  |  | 刘值成 | 3h | 3h | 业务需求，功能需求 | 界面LOGO添加，搜索框去除，登陆注册页面修改 |
| 100 | 1.3.1.2.1.14 | 界面原型第十三版 | manual | 1.67d | 2019-01-11 19:00 A | 2019-01-12 11:30 A | 99 | 100% |  |  | 刘值成 | 5h | 5h |  |  |
| 101 | 1.3.1.2.2 | 为应用环境建模 | manual | 1d | 2018-11-30 18:00 A | 2018-12-01 10:30 A | 61 | 100% |  |  | 张威杰 | 3h | 3h | 提取的需求，访谈报告，愿景与范围文档 | 系统环境关系图 |
| 102 | 1.3.1.2.3 | 分析需求可实现性 | manual | 0.33d | 2018-12-04 18:00 A | 2018-12-04 19:00 A | 61, 101 | 100% |  |  | 陈铉文 | 1h | 1h | 提取的需求，访谈报告，愿景与范围文档 | 可实现性分析报告 |

| ID | WBS | Task | Type | Duration | Start | Finish | Predecessors | Complete | Resources | Work | Actual work | 输入 | 输出 |
| --- | --- | --- | --- | --- | --- | --- | --- | --- | --- | --- | --- | --- | --- |
| 103 | 1.3.1.3 | **需求规格说明** |  | 47.33d | 2018-11-29 13:30 A | 2019-01-15 21:00 A |  | 100% |  | 178h | 178h |  |  |
| 104 | 1.3.1.3.1 | **需求规格说明书** |  | 46.33d | 2018-11-29 13:30 A | 2019-01-14 21:00 A |  | 100% |  | 133h | 133h |  |  |
| 105 | 1.3.1.3.1.1 | 确定软件需求规格说明模板 | manual | 0.33d | 2018-11-29 13:30 A | 2018-11-29 14:30 A | 203 | 100% | 于坤 | 1h | 1h | 提取的需求 | 软件需求规格说明模板 |
| 106 | 1.3.1.3.1.2 | 明确需求来源 | manual | 1d | 2018-12-01 08:30 A | 2018-12-01 11:30 A | 105 | 100% | 刘值成 | 3h | 3h | 提取的需求 | 标识好的需求 |
| 107 | 1.3.1.3.1.3 | 需求唯一标识 | manual | 1d | 2018-12-01 08:30 A | 2018-12-01 11:30 A | 105 | 100% | 张威杰 | 3h | 3h |  |  |
| 108 | 1.3.1.3.1.4 | 记录业务规则 | manual | 1d | 2018-12-02 08:30 A | 2018-12-02 11:30 A | 107 | 100% | 于坤 | 3h | 3h | 标准和算法 | 业务规则 |
| 109 | 1.3.1.3.1.5 | 记录非功能需求 | manual | 1d | 2018-12-02 08:30 A | 2018-12-02 11:30 A | 107 | 100% | 章奇妙 | 3h | 3h | 提取的需求，访谈 | 非功能需求 |
| 110 | 1.3.1.3.1.6 | **数据字典编制** |  | 44.33d | 2018-12-02 08:30 A | 2019-01-14 21:00 A |  | 100% |  | 24h | 24h |  |  |
| 111 | 1.3.1.3.1.6.1 | 数据字典初版 | manual | 1d | 2018-12-02 08:30 A | 2018-12-02 11:30 A | 66 | 100% | 张威杰 | 3h | 3h | 用例场景 | 数据字典 |
| 112 | 1.3.1.3.1.6.2 | 数据字典第一次修改 | manual | 1d | 2018-12-08 08:30 A | 2018-12-08 11:30 A | 111 | 100% | 张威杰 | 3h | 3h | 用例场景 | 数据字典 |
| 113 | 1.3.1.3.1.6.3 | 数据字典第二次修改 | manual | 1d | 2018-12-15 08:30 A | 2018-12-15 11:30 A | 112 | 100% | 张威杰 | 3h | 3h | 用例场景 | 数据字典 |
| 114 | 1.3.1.3.1.6.4 | 数据字典第三次修改 | manual | 1d | 2018-12-22 08:30 A | 2018-12-22 11:30 A | 113 | 100% | 张威杰 | 3h | 3h | 用例场景 | 数据字典 |
| 115 | 1.3.1.3.1.6.5 | 数据字典第四次修改 | manual | 1d | 2018-12-25 18:00 A | 2018-12-25 21:00 A | 114 | 100% | 张威杰 | 3h | 3h | 用例场景 | 数据字典 |
| 116 | 1.3.1.3.1.6.6 | 数据字典第五次修改 | manual | 1d | 2019-01-04 18:00 A | 2019-01-04 21:00 A | 115 | 100% | 张威杰 | 3h | 3h | 用例场景 | 数据字典 |
| 117 | 1.3.1.3.1.6.7 | 数据字典第六次修改 | manual | 1d | 2019-01-10 08:30 A | 2019-01-10 11:30 A | 116, 230 | 100% | 张威杰 | 3h | 3h | 用例场景 | 数据字典 |
| 118 | 1.3.1.3.1.6.8 | 数据字典第七次修改 | manual | 1d | 2019-01-14 18:00 A | 2019-01-14 21:00 A | 117 | 100% | 张威杰 | 3h | 3h | 用例场景 | 数据字典 |
| 119 | 1.3.1.3.1.7 | **用例图绘制** |  | 6d | 2018-12-03 18:00 A | 2018-12-08 11:30 A |  | 100% |  | 36h | 36h |  |  |
| 120 | 1.3.1.3.1.7.1 | 管理员用例图绘制 | manual | 1d | 2018-12-03 18:00 A | 2018-12-03 21:00 A | 109 | 100% | 刘值成 | 3h | 3h | 业务需求，功能需求 | 用例图 |
| 121 | 1.3.1.3.1.7.2 | 用户用例图绘制 | manual | 1d | 2018-12-03 18:00 A | 2018-12-03 21:00 A | 109 | 100% | 陈铉文 | 3h | 3h | 业务需求，功能需求 | 用例图 |
| 122 | 1.3.1.3.1.7.3 | 指导者用例图绘制 | manual | 1d | 2018-12-03 18:00 A | 2018-12-03 21:00 A | 109 | 100% | 于坤 | 3h | 3h | 业务需求，功能需求 | 用例图 |
| 123 | 1.3.1.3.1.7.4 | 项目发起人用例图绘制 | manual | 1d | 2018-12-03 18:00 A | 2018-12-03 21:00 A | 109 | 100% | 张威杰 | 3h | 3h | 业务需求，功能需求 | 用例图 |
| 124 | 1.3.1.3.1.7.5 | 项目经理用例图绘制 | manual | 1d | 2018-12-03 18:00 A | 2018-12-03 21:00 A | 109 | 100% | 章奇妙 | 3h | 3h | 业务需求，功能需求 | 用例图 |
| 125 | 1.3.1.3.1.7.6 | 案例管理员用例图绘制 | manual | 1d | 2018-12-03 18:00 A | 2018-12-03 21:00 A | 109 | 100% | 于坤 | 3h | 3h | 业务需求，功能需求 | 用例图 |
| 126 | 1.3.1.3.1.7.7 | 管理员用例图修改 | manual | 1d | 2018-12-07 18:00 A | 2018-12-07 21:00 A | 120 | 100% | 刘值成 | 3h | 3h | 业务需求，功能需求 | 用例图 |
| 127 | 1.3.1.3.1.7.8 | 用户用例图修改 | manual | 1d | 2018-12-07 18:00 A | 2018-12-07 21:00 A | 121 | 100% | 张威杰 | 3h | 3h | 业务需求，功能需求 | 用例图 |
| 128 | 1.3.1.3.1.7.9 | 指导者用例图修改 | manual | 1d | 2018-12-07 18:00 A | 2018-12-07 21:00 A | 122 | 100% | 章奇妙 | 3h | 3h | 业务需求，功能需求 | 用例图 |
| 129 | 1.3.1.3.1.7.10 | 项目经理用例图修改 | manual | 1d | 2018-12-07 18:00 A | 2018-12-07 21:00 A | 124 | 100% | 于坤 | 3h | 3h | 业务需求，功能需求 | 用例图 |
| 130 | 1.3.1.3.1.7.11 | 项目发起人用例图修改 | manual | 1d | 2018-12-07 18:00 A | 2018-12-07 21:00 A | 123 | 100% | 刘值成 | 3h | 3h | 业务需求，功能需求 | 用例图 |
| 131 | 1.3.1.3.1.7.12 | 用例图整合 | manual | 1d | 2018-12-08 08:30 A | 2018-12-08 11:30 A | 126, 127, 128, 129, 130 | 100% | 陈铉文 | 3h | 3h | 用例图 | 用例图 |

| ID | WBS | Task | Type | Duration | Start | Finish | Predecessors | Complete | Resources | Work | Actual work | 输入 | 输出 |
| --- | --- | --- | --- | --- | --- | --- | --- | --- | --- | --- | --- | --- | --- |
| 132 | 1.3.1.3.1.8 | **用例场景编制** |  | 12d | 2018-12-04 18:00 A | 2018-12-15 11:30 A |  | 100% |  | 33h | 33h |  |  |
| 133 | 1.3.1.3.1.8.1 | 管理员用例场景编写 | manual | 1d | 2018-12-04 18:00 A | 2018-12-04 21:00 A | 108 | 100% | 陈铉文 | 3h | 3h | 业务需求，功能需求 | 管理员用例场景 |
| 134 | 1.3.1.3.1.8.2 | 用户用例场景编写（部分） | manual | 1d | 2018-12-04 18:00 A | 2018-12-04 21:00 A | 108 | 100% | 章奇妙 | 3h | 3h | 业务需求，功能需求 | 用户用例场景 |
| 135 | 1.3.1.3.1.8.3 | 用户用例场景编写（部分） | manual | 1d | 2018-12-04 18:00 A | 2018-12-04 21:00 A | 108 | 100% | 张威杰 | 3h | 3h | 业务需求，功能需求 | 用户用例场景 |
| 136 | 1.3.1.3.1.8.4 | 案例，项目模块用例场景编写 | manual | 1d | 2018-12-04 18:00 A | 2018-12-04 21:00 A | 108 | 100% | 于坤 | 3h | 3h | 业务需求，功能需求 | 管理员用例场景 |
| 137 | 1.3.1.3.1.8.5 | 用例场景整合 | manual | 1d | 2018-12-05 18:00 A | 2018-12-05 21:00 A | 133, 134, 135, 136 | 100% | 章奇妙 | 3h | 3h | 用例场景 | 场景整合 |
| 138 | 1.3.1.3.1.8.6 | 案例管理员用例场景编写 | manual | 1d | 2018-12-13 18:00 A | 2018-12-13 21:00 A | 137 | 100% | 章奇妙 | 3h | 3h | 业务需求，功能需求 | 案例管理员用例场景 |
| 139 | 1.3.1.3.1.8.7 | 管理员用例修改 | manual | 1d | 2018-12-13 18:00 A | 2018-12-13 21:00 A | 137 | 100% | 张威杰 | 3h | 3h | 管理员用例场景 | 管理员用例场景 |
| 140 | 1.3.1.3.1.8.8 | 用户用例场景修改 | manual | 1d | 2018-12-13 18:00 A | 2018-12-13 21:00 A | 137 | 100% | 于坤 | 3h | 3h | 用户用例场景 | 用户用例场景 |
| 141 | 1.3.1.3.1.8.9 | 项目指导者用例场景编写 | manual | 1d | 2018-12-14 18:00 A | 2018-12-14 21:00 A | 137 | 100% | 于坤 | 3h | 3h | 业务需求，功能需求 | 指导者用例场景 |
| 142 | 1.3.1.3.1.8.10 | 项目经理用例场景编写 | manual | 1d | 2018-12-14 18:00 A | 2018-12-14 21:00 A | 137 | 100% | 张威杰 | 3h | 3h | 业务需求，功能需求 | 项目经理用例场景 |
| 143 | 1.3.1.3.1.8.11 | 用例场景整合 | manual | 1d | 2018-12-15 08:30 A | 2018-12-15 11:30 A | 138, 139, 140, 141, 142 | 100% | 于坤 | 3h | 3h | 用例场景 | 用例场景整合 |
| 144 | 1.3.1.3.1.9 | 需求规格说明书初稿整合 | manual | 1d | 2018-12-16 08:30 A | 2018-12-16 11:30 A | 113, 131, 143 | 100% | 于坤 | 3h | 3h | 用例图，用例场景，数据字典 | 需求规格说明书 |
| 145 | 1.3.1.3.1.10 | **需求规格说明书修改** |  | 2d | 2018-12-21 18:00 A | 2018-12-22 11:30 A |  | 100% |  | 9h | 9h |  |  |
| 146 | 1.3.1.3.1.10.1 | 增加案例管理员用例 | manual | 1d | 2018-12-21 18:00 A | 2018-12-21 21:00 A | 144 | 100% | 陈铉文 | 3h | 3h | 需求规格说明书 | 需求规格说明书 |
| 147 | 1.3.1.3.1.10.2 | 修改项目经理用例 | manual | 1d | 2018-12-21 18:00 A | 2018-12-21 21:00 A | 144 | 100% | 于坤 | 3h | 3h | 需求规格说明书 | 需求规格说明书 |
| 148 | 1.3.1.3.1.10.3 | 需求规格说明书整合 | manual | 1d | 2018-12-22 08:30 A | 2018-12-22 11:30 A | 146, 147 | 100% | 陈铉文 | 3h | 3h | 需求规格说明书 | 需求规格说明书 |
| 149 | 1.3.1.3.1.11 | **需求规格说明书修改** |  | 2d | 2018-12-23 08:30 A | 2018-12-24 21:00 A |  | 100% |  | 6h | 6h |  |  |
| 150 | 1.3.1.3.1.11.1 | 修改管理员用例场景 | manual | 1d | 2018-12-23 08:30 A | 2018-12-23 11:30 A | 148 | 100% | 陈铉文 | 3h | 3h | 需求规格说明书 | 需求规格说明书 |
| 151 | 1.3.1.3.1.11.2 | 需求规格说明书整合 | manual | 1d | 2018-12-24 18:00 A | 2018-12-24 21:00 A | 150 | 100% | 陈铉文 | 3h | 3h | 需求规格说明书 | 需求规格说明书 |
| 152 | 1.3.1.3.1.12 | **需求规格说明书修改** |  | 3d | 2018-12-30 18:00 A | 2019-01-02 21:00 A |  | 100% |  | 9h | 9h | 需求规格说明书 | 需求规格说明书 |
| 153 | 1.3.1.3.1.12.1 | 用例场景修改 | manual | 1d | 2018-12-30 18:00 A | 2018-12-31 20:00 A | 151 | 100% | 陈铉文 | 3h | 3h | 业务需求，功能需求 | 需求规格说明书 |
| 154 | 1.3.1.3.1.12.2 | 用例图修改 | manual | 1d | 2018-12-30 18:00 A | 2018-12-31 20:00 A | 151 | 100% | 章奇妙 | 3h | 3h | 业务需求，功能需求 | 需求规格说明书 |
| 155 | 1.3.1.3.1.12.3 | 需求规格说明书整合 | manual | 1d | 2019-01-02 18:00 A | 2019-01-02 21:00 A | 153, 154 | 100% | 于坤 | 3h | 3h | 业务需求，功能需求 | 需求规格说明书 |
| 156 | 1.3.1.3.2 | 测试用例编写 | manual | 2d | 2018-12-22 08:30 A | 2018-12-23 11:30 A | 143 | 100% | 章奇妙 | 6h | 6h | 用例场景 | 测试用例 |
| 157 | 1.3.1.3.3 | 测试用例修改 | manual | 3d | 2018-12-24 18:00 A | 2018-12-26 21:00 A | 156 | 100% | 章奇妙 | 9h | 9h | 用例场景 | 测试用例 |
| 158 | 1.3.1.3.4 | 测试用例修改 | manual | 2d | 2019-01-14 18:00 A | 2019-01-15 21:00 A | 157 | 100% | 章奇妙 | 6h | 6h | 用例场景 | 测试用例 |
| 159 | 1.3.1.3.5 | 用户手册编写 | manual | 1d | 2018-12-23 08:30 A | 2018-12-23 11:30 A | 96 | 100% | 于坤 | 3h | 3h | 界面原型 | 用户手册 |
| 160 | 1.3.1.3.6 | 用户手册修改 | manual | 1d | 2018-12-24 18:00 A | 2018-12-24 21:00 A | 159 | 100% | 于坤 | 3h | 3h | 界面原型 | 用户手册 |
| 161 | 1.3.1.3.7 | 用户手册修改 | manual | 1d | 2019-01-08 18:00 A | 2019-01-08 21:00 A | 160 | 100% | 于坤 | 3h | 3h | 界面原型 | 用户手册 |
| 162 | 1.3.1.3.8 | SRS评审ppt制作 | manual | 2d | 2018-12-27 18:00 A | 2018-12-28 21:00 A | 151, 157, 160 | 100% | 陈铉文 | 6h | 6h | SRS文档 | SRS评审PPT |
| 163 | 1.3.1.3.9 | SRS评审PPT修改 | manual | 1d | 2018-12-29 08:30 A | 2018-12-29 11:30 A | 162 | 100% | 陈铉文 | 3h | 3h | SRS文档 | SRS评审PPT |
| 164 | 1.3.1.3.10 | SRS评审PPT修改 | manual | 1d | 2018-12-30 08:30 A | 2018-12-30 11:30 A | 163 | 100% | 陈铉文 | 3h | 3h | SRS文档 | SRS评审PPT |
| 165 | 1.3.1.3.11 | SRS发布，建立基线 | milestone, manual | 1d | 2019-01-13 08:30 A | 2019-01-13 11:30 A | 214 | 100% | 于坤 | 3h | 3h |  |  |

| ID | WBS | Task | Type | Duration | Start | Finish | Predecessors | Complete | Resources | Work | Actual work | 输入 | 输出 |
| --- | --- | --- | --- | --- | --- | --- | --- | --- | --- | --- | --- | --- | --- |
| 166 | 1.3.2 | **需求管理** |  | 11d | 2019-01-01 18:00 A | 2019-01-11 21:00 A |  | 100% |  | 63h | 63h |  |  |
| 167 | 1.3.2.1 | 进行需求影响分析 | manual | 0.67d | 2019-01-01 18:00 A | 2019-01-01 20:00 A |  | 100% | 陈铉文; 张威杰 | 4h | 4h | 需求规格说明书 | 需求影响分析 |
| 168 | 1.3.2.2 | 建立变更控制流程 | manual | 0.67d | 2019-01-03 18:00 A | 2019-01-03 20:00 A | 167 | 100% | 刘值成 | 2h | 2h | 需求规格说明书 | 基线 |
| 169 | 1.3.2.3 | 跟踪每一项变更 | manual | 1d | 2019-01-03 18:00 A | 2019-01-03 21:00 A | 168 | 100% | 于坤 | 3h | 3h | 需求规格说明书 | 需求变更 |
| 170 | 1.3.2.4 | 跟踪需求问题 | manual | 1d | 2019-01-03 20:00 A | 2019-01-04 20:00 A | 168 | 100% | 陈铉文 | 3h | 3h | 需求规格说明书 | 需求问题 |
| 171 | 1.3.2.5 | 维护一个需求可跟踪矩阵(1) | manual | 1d | 2019-01-04 18:00 A | 2019-01-04 21:00 A |  | 100% | 张威杰 | 3h | 3h | 需求规格说明书 | 需求可跟踪矩阵 |
| 172 | 1.3.2.6 | 维护一个需求可跟踪矩阵(2) | manual | 1d | 2019-01-05 08:30 A | 2019-01-05 11:30 A | 171 | 100% | 于坤 | 3h | 3h | 需求规格说明书,需求可跟踪矩阵 | 需求可跟踪矩阵 |
| 173 | 1.3.2.7 | 维护一个需求可跟踪矩阵(3) | manual | 1d | 2019-01-06 08:30 A | 2019-01-06 11:30 A | 172 | 100% | 章奇妙 | 3h | 3h | 需求规格说明书,需求可跟踪矩阵 | 需求可跟踪矩阵 |
| 174 | 1.3.2.8 | CCB章程 | manual | 1d | 2019-01-04 20:00 A | 2019-01-05 10:30 A | 170 | 100% | 章奇妙 | 3h | 3h |  |  |
| 175 | 1.3.2.9 | 变更申请书 | manual | 1d | 2019-01-05 10:30 A | 2019-01-06 10:30 A | 174 | 100% | 于坤 | 3h | 3h |  |  |
| 176 | 1.3.2.10 | 变更影响分析报告 | manual | 1d | 2019-01-06 10:30 A | 2019-01-07 20:00 A | 175 | 100% | 张威杰 | 3h | 3h |  |  |
| 177 | 1.3.2.11 | 使用需求管理工具 | manual | 0.67d | 2019-01-07 18:00 A | 2019-01-07 20:00 A |  | 100% | 刘值成; 章奇妙 | 4h | 4h | 需求规格说明书 | 需求管理工具 |
| 178 | 1.3.2.12 | 衡量需求稳定性 | manual | 0.67d | 2019-01-09 18:00 A | 2019-01-09 20:00 A | 173 | 100% | 陈铉文; 于坤; 张威杰 | 6h | 6h | 需求规格说明书 | 衡量需求稳定性文档 |
| 179 | 1.3.2.13 | 软件需求变更文档 | milestone, manual | 1.33d | 2019-01-09 20:00 A | 2019-01-10 21:00 A | 167, 168, 169, 170, 173, 177, 178 | 100% | 于坤; 章奇妙; 陈铉文; 刘值成; 张威杰 | 20h | 20h | 需求规格说明书 | 软件需求变更文档 |
| 180 | 1.3.2.14 | 需求变更评审PPT制作 | manual | 1d | 2019-01-11 18:00 A | 2019-01-11 21:00 A | 179 | 100% | 陈铉文 | 3h | 3h |  |  |
| 181 | 1.4 | **项目控制** |  | 78.81d | 2018-09-19 18:00 A | 2019-01-12 20:30 A |  | 100% |  | 160h | 160h |  |  |
| 182 | 1.4.1 | **小组第一次会议** |  | 0.33d | 2018-09-19 18:00 A | 2018-09-19 19:00 A |  | 100% |  | 5h | 5h | 小组成立 | 小组第一次会议记录 |
| 183 | 1.4.1.1 | 小组成员分工 | manual | 0.5h | 2018-09-19 18:00 A | 2018-09-19 18:30 A | 4 | 100% | 章奇妙; 陈铉文; 刘值成; 于坤; 张威杰 | 2.5h | 2.5h |  |  |
| 184 | 1.4.1.2 | 项目讨论选定上报 | manual | 0.5h | 2018-09-19 18:30 A | 2018-09-19 19:00 A | 4 | 100% | 陈铉文; 刘值成; 于坤; 张威杰; 章奇妙 | 2.5h | 2.5h | 三个可选择的项目 | 确定基于项目的案例学习系统为小组选择项目 |
| 185 | 1.4.2 | 小组第二次会议 | manual | 0.33d | 2018-09-22 08:30 A | 2018-09-22 09:30 A | 182 | 100% | 陈铉文; 刘值成; 于坤; 张威杰; 章奇妙 | 5h | 5h | 小组会议内容 | 小组第二次会议记录 |
| 186 | 1.4.3 | 小组第三次会议 | manual | 0.33d | 2018-09-27 18:00 A | 2018-09-27 19:00 A | 185 | 100% | 陈铉文; 刘值成; 于坤; 张威杰; 章奇妙 | 5h | 5h | 小组会议内容 | 小组第三次会议记录 |
| 187 | 1.4.4 | **小组第四次会议** |  | 0.33d | 2018-10-02 18:00 A | 2018-10-02 19:00 A | 186 | 100% |  | 5h | 5h |  | 小组第四次会议记录 |
| 188 | 1.4.4.1 | 《需求工程项目计划》组内评审 | milestone, manual | 0.22d | 2018-10-02 18:00 A | 2018-10-02 18:40 A | 43 | 100% | 陈铉文; 刘值成; 于坤; 张威杰; 章奇妙 | 3.33h | 3.33h |  |  |
| 189 | 1.4.4.2 | 可行性分析文档分工及需求计划修改 | manual | 0.11d | 2018-10-02 18:40 A | 2018-10-02 19:00 A | 188 | 100% | 陈铉文; 刘值成; 于坤; 张威杰; 章奇妙 | 1.67h | 1.67h |  |  |
| 190 | 1.4.5 | 小组第五次会议 | manual | 0.33d | 2018-10-10 18:00 A | 2018-10-10 19:00 A | 187 | 100% | 陈铉文; 刘值成; 于坤; 张威杰; 章奇妙 | 5h | 5h | 小组会议内容 | 小组第五次会议记录 |
| 191 | 1.4.6 | 小组第六次会议 | manual | 0.33d | 2018-10-13 18:00 A | 2018-10-13 19:00 A | 190 | 100% | 陈铉文; 刘值成; 于坤; 张威杰; 章奇妙 | 5h | 5h | 小组会议内容 | 小组第六次会议记录 |
| 192 | 1.4.7 | 小组第七次会议 | manual | 0.33d | 2018-10-17 18:00 A | 2018-10-17 19:00 A | 191 | 100% | 陈铉文; 刘值成; 于坤; 张威杰; 章奇妙 | 5h | 5h | 小组会议内容 | 小组第七次会议记录 |
| 193 | 1.4.8 | 小组第八次会议 | manual | 0.33d | 2018-10-19 18:00 A | 2018-10-19 19:00 A | 192 | 100% | 陈铉文; 刘值成; 于坤; 张威杰; 章奇妙 | 5h | 5h | 小组会议内容 | 小组第八次会议记录 |
| 194 | 1.4.9 | 小组第九次会议 | manual | 0.33d | 2018-10-24 18:00 A | 2018-10-24 19:00 A | 193 | 100% | 陈铉文; 刘值成; 于坤; 张威杰; 章奇妙 | 5h | 5h | 小组会议内容 | 小组第九次会议记录 |
| 195 | 1.4.10 | 小组第十次会议 | manual | 0.33d | 2018-10-27 18:00 A | 2018-10-27 19:00 A | 194 | 100% | 陈铉文; 刘值成; 于坤; 张威杰; 章奇妙 | 5h | 5h | 小组会议内容 | 小组第十次会议记录 |
| 196 | 1.4.11 | 小组第十一次会议 | manual | 0.33d | 2018-10-31 18:00 A | 2018-10-31 19:00 A | 195 | 100% | 陈铉文; 刘值成; 于坤; 张威杰; 章奇妙 | 5h | 5h | 小组会议内容 | 小组第十一次会议记录 |
| 197 | 1.4.12 | 小组第十二次会议 | manual | 0.33d | 2018-11-03 18:00 A | 2018-11-03 19:00 A | 196 | 100% | 陈铉文; 刘值成; 于坤; 张威杰; 章奇妙 | 5h | 5h | 小组会议内容 | 小组第十二次会议记录 |
| 198 | 1.4.13 | 小组第十三次会议 | manual | 0.33d | 2018-11-07 18:00 A | 2018-11-07 19:00 A | 197 | 100% | 陈铉文; 刘值成; 于坤; 张威杰; 章奇妙 | 5h | 5h | 小组会议内容 | 小组第十三次会议记录 |
| 199 | 1.4.14 | 小组第十四次会议 | manual | 0.33d | 2018-11-12 18:00 A | 2018-11-12 19:00 A | 198 | 100% | 陈铉文; 刘值成; 于坤; 张威杰; 章奇妙 | 5h | 5h | 小组会议内容 | 小组第十四次会议记录 |
| 200 | 1.4.15 | 小组第十五次会议 | manual | 0.33d | 2018-11-18 18:00 A | 2018-11-18 19:00 A | 199 | 100% | 陈铉文; 刘值成; 于坤; 张威杰; 章奇妙 | 5h | 5h | 小组会议内容 | 小组第十五次会议记录 |
| 201 | 1.4.16 | 小组第十六次会议 | manual | 0.33d | 2018-11-21 18:00 A | 2018-11-21 19:00 A | 200 | 100% | 陈铉文; 刘值成; 于坤; 张威杰; 章奇妙 | 5h | 5h | 小组会议内容 | 小组第十六次会议记录 |
| 202 | 1.4.17 | 小组第十七次学习会议 | manual | 0.33d | 2018-11-24 08:30 A | 2018-11-24 09:30 A | 201 | 100% | 陈铉文; 刘值成; 于坤; 张威杰; 章奇妙 | 5h | 5h | 小组会议内容 | 小组第十七次会议记录 |
| 203 | 1.4.18 | 小组第十八次会议 | manual | 0.33d | 2018-11-28 18:00 A | 2018-11-28 19:00 A | 202 | 100% | 陈铉文; 刘值成; 于坤; 张威杰; 章奇妙 | 5h | 5h | 小组会议内容 | 小组第十八次会议记录 |
| 204 | 1.4.19 | 需求工程项目计划组内评审 | manual | 0.33d | 2018-11-27 18:00 A | 2018-11-27 19:00 A | 26, 30 | 100% | 陈铉文; 刘值成; 于坤; 张威杰; 章奇妙 | 5h | 5h | 需求工程项目计划评审表及项目计划文档 | 需求工程项目计划评审记录 |
| 205 | 1.4.20 | 需求工程项目计划评审 | manual | 0.33d | 2018-11-29 13:30 A | 2018-11-29 14:30 A | 204 | 100% | 陈铉文; 刘值成; 于坤; 张威杰; 章奇妙 | 5h | 5h | 需求工程项目计划文档、需求工程项目计划PPT | 需求工程项目计划评审结果 |
| 206 | 1.4.21 | 小组第十九次会议 | manual | 0.33d | 2018-12-05 18:00 A | 2018-12-05 19:00 A | 205 | 100% | 陈铉文; 刘值成; 于坤; 张威杰; 章奇妙 | 5h | 5h | 小组会议内容 | 小组第十九次会议记录 |
| 207 | 1.4.22 | 小组第二十次会议 | manual | 0.33d | 2018-12-12 18:00 A | 2018-12-12 19:00 A | 206 | 100% | 陈铉文; 刘值成; 于坤; 张威杰; 章奇妙 | 5h | 5h | 小组会议内容 | 小组第二十次会议记录 |
| 208 | 1.4.23 | 小组第二十一次会议 | milestone, manual | 0d | 2018-12-15 11:30 A | 2018-12-15 11:30 A | 207 | 100% | 陈铉文; 刘值成; 于坤; 张威杰; 章奇妙 |  |  | 小组会议内容 | 小组第二十一次会议记录 |
| 209 | 1.4.24 | 小组第二十二次会议 | manual | 0.33d | 2018-12-19 18:00 A | 2018-12-19 19:00 A | 208 | 100% | 陈铉文; 刘值成; 于坤; 张威杰; 章奇妙 | 5h | 5h | 小组会议内容 | 小组第二十二次会议记录 |
| 210 | 1.4.25 | 小组第二十三次会议 | manual | 0.33d | 2018-12-26 18:00 A | 2018-12-26 19:00 A | 209 | 100% | 陈铉文; 刘值成; 于坤; 张威杰; 章奇妙 | 5h | 5h | 小组会议内容 | 小组第二十三次会议记录 |
| 211 | 1.4.26 | 小组第二十四次会议 | manual | 0.33d | 2019-01-02 18:00 A | 2019-01-02 19:00 A | 210 | 100% | 陈铉文; 刘值成; 于坤; 张威杰; 章奇妙 | 5h | 5h | 小组会议内容 | 小组第二十四次会议记录 |
| 212 | 1.4.27 | 小组第二十五次会议 | manual | 0.33d | 2019-01-09 18:00 A | 2019-01-09 19:00 A | 211 | 100% | 陈铉文; 刘值成; 于坤; 张威杰; 章奇妙 | 5h | 5h | 小组会议内容 | 小组第二十五次会议记录 |
| 213 | 1.4.28 | SRS组内评审会议 | manual | 0.33d | 2019-01-10 18:00 A | 2019-01-10 19:00 A | 164 | 100% | 陈铉文; 刘值成; 于坤; 张威杰; 章奇妙 | 5h | 5h | SRS相关文档、SRS评审表 | SRS组内评审会议记录 |
| 214 | 1.4.29 | SRS评审会议 | manual | 0.33d | 2019-01-12 13:30 A | 2019-01-12 14:30 A | 213 | 100% | 陈铉文; 刘值成; 于坤; 张威杰; 章奇妙 | 5h | 5h | SRS相关文档、SRS评审表 | SRS评审结果 |
| 215 | 1.4.30 | CCB会议 | manual | 1d | 2019-01-08 18:00 A | 2019-01-08 21:00 A | 176 | 100% | 陈铉文; 刘值成; 于坤; 张威杰; 章奇妙 | 15h | 15h |  |  |
| 216 | 1.4.31 | 需求变更评审会议 | manual | 0.33d | 2019-01-12 19:30 A | 2019-01-12 20:30 A | 179, 180 | 100% | 陈铉文; 刘值成; 于坤; 张威杰; 章奇妙 | 5h | 5h |  |  |

| ID | WBS | Task | Type | Duration | Start | Finish | Predecessors | Complete | Remaining | Total slack | Resources | Work | Actual work | 输入 | 输出 |
| --- | --- | --- | --- | --- | --- | --- | --- | --- | --- | --- | --- | --- | --- | --- | --- |
| 217 | 1.5 | **项目收尾** |  | 4.67d | 2019-01-12 08:30 A | 2019-01-16 21:00 |  | 75% | 1.17d | 0d |  | 34h | 19h |  |  |
| 218 | 1.5.1 | 文档整理 | manual | 1d | 2019-01-12 08:30 A | 2019-01-12 11:30 A | 53, 155, 179 | 100% |  |  | 张威杰 | 3h | 3h | 需求工程项目计划文档，SRS文档，需求变更文档 | 综合文档 |
| 219 | 1.5.2 | 文档改进 | manual | 0.67d | 2019-01-13 08:30 A | 2019-01-13 10:30 A | 218 | 100% |  |  | 陈铉文; 于坤; 张威杰; 章奇妙 | 8h | 8h | 综合文档 | 改进的综合文档 |
| 220 | 1.5.3 | 项目总结报告 | milestone, manual | 0.33d | 2019-01-13 10:30 A | 2019-01-13 11:30 A | 219 | 100% |  |  | 陈铉文; 刘值成; 于坤; 张威杰; 章奇妙 | 5h | 5h | 综合文档 | 总结报告 |
| 221 | 1.5.4 | 最终评审PPT制作 | manual | 1d | 2019-01-13 10:30 A | 2019-01-14 20:00 A | 219 | 100% |  |  | 陈铉文 | 3h | 3h | 综合文档 | 最终评审PPT |
| 222 | 1.5.5 | 最后评审 | manual | 1d | 2019-01-16 18:00 | 2019-01-16 21:00 | 221 |  |  |  | 陈铉文; 刘值成; 于坤; 张威杰; 章奇妙 | 15h |  | 评审表，评审PPT | 评审结果 |
| 223 | 1.6 | **沟通** |  | 56.14d | 2018-10-23 17:00 A | 2019-01-05 16:28 A |  | 100% |  |  |  | 20.58h | 20.58h |  |  |
| 224 | 1.6.1 | 10.23与杨枨老师沟通 | manual | 0.08d | 2018-10-23 17:00 A | 2018-10-23 17:15 A |  | 100% |  |  | 陈铉文; 刘值成; 于坤; 张威杰; 章奇妙 | 1.25h | 1.25h | 和杨老师的访谈沟通 | 访谈记录 |
| 225 | 1.6.2 | 11.23与杨枨老师沟通 | manual | 0.14d | 2018-11-23 17:00 A | 2018-11-23 17:25 A | 224 | 100% |  |  | 陈铉文; 刘值成; 于坤; 张威杰; 章奇妙 | 2.08h | 2.08h | 和杨老师的访谈沟通 | 访谈记录 |
| 226 | 1.6.3 | 12.6与杨枨老师沟通 | manual | 0.33d | 2018-12-06 17:00 A | 2018-12-06 18:00 A | 225 | 100% |  |  | 陈铉文; 刘值成; 于坤; 张威杰; 章奇妙 | 5h | 5h | 和杨老师的访谈沟通 | 访谈记录 |
| 227 | 1.6.4 | 12.16与杨枨老师沟通 | manual | 0.13d | 2018-12-16 13:00 A | 2018-12-16 13:24 A | 226 | 100% |  |  | 陈铉文; 刘值成; 于坤; 张威杰; 章奇妙 | 2h | 2h | 和杨老师的访谈沟通 | 访谈记录 |
| 228 | 1.6.5 | 12.27与潘琳学姐沟通 | manual | 0.19d | 2018-12-27 18:00 A | 2018-12-27 18:35 A | 227 | 100% |  |  | 陈铉文; 刘值成; 于坤; 张威杰; 章奇妙 | 2.92h | 2.92h | 访谈沟通 | 访谈记录 |
| 229 | 1.6.6 | 12.28与杨枨老师沟通 | manual | 0.16d | 2018-12-28 18:00 A | 2018-12-28 18:28 A | 228 | 100% |  |  | 陈铉文; 刘值成; 于坤; 张威杰; 章奇妙 | 2.33h | 2.33h | 访谈沟通 | 访谈记录 |
| 230 | 1.6.7 | 举办JAD会议 | manual | 0.33d | 2019-01-05 15:28 A | 2019-01-05 16:28 A | 229 | 100% |  |  | 陈铉文; 刘值成; 于坤; 张威杰; 章奇妙 | 5h | 5h | 访谈沟通 | 访谈记录 |
| 231 | 1.7 | **知识准备** |  | 54.14d | 2018-09-29 08:30 A | 2018-12-23 11:30 A |  | 100% |  |  |  | 30h | 30h |  |  |
| 232 | 1.7.1 | UML概述PPT制作 | manual | 1d | 2018-09-29 08:30 A | 2018-09-30 11:30 A | 186 | 100% |  |  | 陈铉文 | 6h | 6h | 课本知识 | UML概述PPT制作 |
| 233 | 1.7.2 | UML工具介绍PPT制作 | manual | 1d | 2018-10-18 18:00 A | 2018-10-21 19:00 A | 192 | 100% |  |  | 章奇妙 | 4h | 4h | 课本知识 | UML工具介绍PPT制作 |
| 234 | 1.7.3 | UML基础I PPT制作 | manual | 1d | 2018-10-25 18:00 A | 2018-10-28 19:00 A | 194 | 100% |  |  | 张威杰 | 4h | 4h | 课本知识 | UML基础IPPT制作 |
| 235 | 1.7.4 | UML界面原型PPT制作 | manual | 1d | 2018-11-01 18:00 A | 2018-11-04 19:00 A | 196 | 100% |  |  | 刘值成 | 4h | 4h | 课本知识 | UML界面原型PPT制作 |
| 236 | 1.7.5 | UML基础III | manual | 2d | 2018-12-15 08:30 A | 2018-12-16 11:30 A | 200 | 100% |  |  | 于坤 | 6h | 6h | 课本知识 | UML基础IIIPPT制作 |
| 237 | 1.7.6 | UML基础Ⅳ | manual | 2d | 2018-12-22 08:30 A | 2018-12-23 11:30 A | 203 | 100% |  |  | 陈铉文 | 6h | 6h | 课本知识 | UML基础ⅣPPT制作 |
